# AgenciaDigital

How a schedule from ProjectLibre changed from version to version. A marks actual dates.

## Version 1 (saved 2026-10-12)

Note of the change: main: gannt diagram, spaces in docs

| ID | WBS | Task | Duration | Start | Finish | Predecessors |
| --- | --- | --- | --- | --- | --- | --- |
| 1 | 1 | **Dirección y gestión del proyecto** | 35d? | 2027-01-04 | 2027-02-19 |  |
| 2 |  | Formalización del inicio del proyecto | 5d? | 2027-01-04 | 2027-01-08 |  |
| 3 |  | Identificación y análisis de stakeholders | 10d? | 2027-01-11 | 2027-01-22 | 2 |
| 4 |  | Elaboración del plan de dirección del proyecto | 15d? | 2027-01-25 | 2027-02-12 | 3 |
| 5 |  | Aprobación del plan de dirección | 5d? | 2027-02-15 | 2027-02-19 | 4 |
| 6 |  | Seguimiento y control integrado | 1d? | 2027-01-04 | 2027-01-04 |  |
| 7 |  | Gestión de cambios y riesgos | 1d? | 2027-01-04 | 2027-01-04 |  |
| 8 | 2 | **Modelo operativo y planificación de la implantación** | 55d? | 2027-01-04 | 2027-03-19 |  |
| 9 |  | Análisis del modelo de negocio y requisitos operativos | 10d? | 2027-01-04 | 2027-01-15 |  |
| 10 |  | Definición de la estructura organizativa | 10d? | 2027-01-18 | 2027-01-29 | 9 |
| 11 |  | Diseño del modelo operativo | 15d? | 2027-02-01 | 2027-02-19 | 10 |
| 12 |  | Elaboración del plan de implantación | 15d? | 2027-02-22 | 2027-03-12 | 11 |
| 13 |  | Validación y aprobación del modelo operativo | 5d? | 2027-03-15 | 2027-03-19 | 12 |
| 14 | 3 | **Constitución legal, administrativa y financiera** | 75d? | 2027-01-04 | 2027-04-16 |  |
| 15 |  | Definición de la forma jurídica y estructura societaria | 10d? | 2027-01-04 | 2027-01-15 |  |
| 16 |  | Preparación de la documentación de constitución | 10d? | 2027-01-18 | 2027-01-29 | 15 |
| 17 |  | Formalización notarial e inscripción registral | 20d? | 2027-02-01 | 2027-02-26 | 16 |
| 18 |  | Altas fiscales, laborales y administrativas | 10d? | 2027-03-01 | 2027-03-12 | 17 |
| 19 |  | Apertura de cuentas y configuración financiera | 10d? | 2027-03-15 | 2027-03-26 | 18 |
| 20 |  | Preparación de contratos y procedimientos administrativos | 15d? | 2027-03-29 | 2027-04-16 | 19 |
| 21 | 4 | **Organización y equipo** | 85d? | 2027-01-04 | 2027-04-30 |  |
| 22 |  | Definición de perfiles, roles y responsabilidades | 10d? | 2027-01-04 | 2027-01-15 |  |
| 23 |  | Elaboración del plan de contratación | 10d? | 2027-01-18 | 2027-01-29 | 22 |
| 24 |  | Selección y contratación del equipo inicial | 30d? | 2027-02-01 | 2027-03-12 | 23 |
| 25 |  | Incorporación y onboarding del personal | 15d? | 2027-03-15 | 2027-04-02 | 24 |
| 26 |  | Formación en procesos, herramientas y metodologías | 15d? | 2027-04-05 | 2027-04-23 | 25 |
| 27 |  | Validación de la preparación operativa del equipo | 5d? | 2027-04-26 | 2027-04-30 | 26 |
| 28 | 5 | **Catálogo de servicios y modelo de delivery** | 80d? | 2027-01-04 | 2027-04-23 |  |
| 29 |  | Definición de las cinco líneas de servicio | 15d? | 2027-01-04 | 2027-01-22 |  |
| 30 |  | Diseño del catálogo de servicios y entregables | 15d? | 2027-01-25 | 2027-02-12 | 29 |
| 31 |  | Definición del modelo de estimación y presupuestación | 10d? | 2027-02-15 | 2027-02-26 | 30 |
| 32 |  | Diseño del modelo de delivery y gestión de proyectos | 20d? | 2027-03-01 | 2027-03-26 | 31 |
| 33 |  | Elaboración de plantillas y estándares de entrega | 15d? | 2027-03-29 | 2027-04-16 | 32 |
| 34 |  | Validación y aprobación del catálogo y modelo de delivery | 5d? | 2027-04-19 | 2027-04-23 | 33 |
| 35 | 6 | **Plataforma tecnológica** | 110d? | 2027-01-04 | 2027-06-04 |  |
| 36 |  | Definición de requisitos tecnológicos y arquitectura de referencia | 15d? | 2027-01-04 | 2027-01-22 |  |
| 37 |  | Selección de proveedores cloud y herramientas tecnológicas | 10d? | 2027-01-25 | 2027-02-05 | 36 |
| 38 |  | Configuración de infraestructura cloud y entornos de trabajo | 20d? | 2027-02-08 | 2027-03-05 | 37 |
| 39 |  | Implantación de repositorios y pipelines CI/CD | 15d? | 2027-03-08 | 2027-03-26 | 38 |
| 40 |  | Configuración de herramientas de gestión y documentación | 10d? | 2027-03-29 | 2027-04-09 | 39 |
| 41 |  | Implantación de herramientas de testing y control de calidad | 15d? | 2027-04-12 | 2027-04-30 | 40 |
| 42 |  | Configuración de monitorización, seguridad y copias de seguridad | 15d? | 2027-05-03 | 2027-05-21 | 41 |
| 43 |  | Pruebas de integración y validación de la plataforma tecnológica | 10d? | 2027-05-24 | 2027-06-04 | 42 |
| 44 |  | Procesos, calidad y gobierno | 1d? | 2027-01-04 | 2027-01-04 |  |
| 45 | 8 | **Definición del modelo de gobierno y responsabilidades** | 90d? | 2027-01-04 | 2027-05-07 |  |
| 46 |  | Diseño de procesos de gestión de proyectos | 10d? | 2027-01-04 | 2027-01-15 |  |
| 47 |  | Definición de estándares de calidad y criterios de aceptación | 15d? | 2027-01-18 | 2027-02-05 | 46 |
| 48 |  | Diseño de procesos de gestión de riesgos y cambios | 15d? | 2027-02-08 | 2027-02-26 | 47 |
| 49 |  | Definición de políticas de seguridad y protección de datos | 10d? | 2027-03-01 | 2027-03-12 | 48 |
| 50 |  | Implantación de procesos de documentación y gestión del conocimiento | 15d? | 2027-03-15 | 2027-04-02 | 49 |
| 51 |  | Configuración de indicadores KPI y mecanismos de seguimiento | 15d? | 2027-04-05 | 2027-04-23 | 50 |
| 52 |  | Validación y aprobación del sistema de procesos y gobierno | 10d? | 2027-04-26 | 2027-05-07 | 51 |
| 53 | 9 | **Capacidades comerciales y de marketing** | 110d? | 2027-01-04 | 2027-06-04 |  |
| 54 |  | Definición de la estrategia comercial y posicionamiento de mercado | 15d? | 2027-01-04 | 2027-01-22 |  |
| 55 |  | Desarrollo de la identidad corporativa y materiales de marca | 15d? | 2027-01-25 | 2027-02-12 | 54 |
| 56 |  | Diseño y desarrollo del sitio web corporativo | 20d? | 2027-02-15 | 2027-03-12 | 55 |
| 57 |  | Selección y configuración del sistema CRM | 15d? | 2027-03-15 | 2027-04-02 | 56 |
| 58 |  | Elaboración de propuestas comerciales y materiales de ventas | 15d? | 2027-04-05 | 2027-04-23 | 57 |
| 59 |  | Definición de procesos comerciales y gestión de clientes | 15d? | 2027-04-26 | 2027-05-14 | 58 |
| 60 |  | Preparación de canales digitales y herramientas de marketing | 10d? | 2027-05-17 | 2027-05-28 | 59 |
| 61 |  | Validación y aprobación de las capacidades comerciales | 5d? | 2027-05-31 | 2027-06-04 | 60 |
| 62 | 10 | **Proyectos piloto** | 225d? | 2027-01-04 | 2027-11-12 |  |
| 63 |  | Confirmación del alcance y requisitos de los tres proyectos piloto | 10d? | 2027-01-04 | 2027-01-15 |  |
| 64 |  | Planificación detallada de los proyectos piloto | 15d? | 2027-01-18 | 2027-02-05 | 63 |
| 65 |  | Preparación de equipos y entornos de ejecución | 10d? | 2027-02-08 | 2027-02-19 | 64 |
| 66 |  | Ejecución del proyecto piloto 1 | 45d? | 2027-02-22 | 2027-04-23 | 65 |
| 67 |  | Ejecución del proyecto piloto 2 | 60d? | 2027-04-26 | 2027-07-16 | 66 |
| 68 |  | Ejecución del proyecto piloto 3 | 60d? | 2027-07-19 | 2027-10-08 | 67 |
| 69 |  | Evaluación de resultados y recopilación de indicadores KPI | 15d? | 2027-10-11 | 2027-10-29 | 68 |
| 70 |  | Validación y aceptación formal de los tres proyectos piloto | 10d? | 2027-11-01 | 2027-11-12 | 69 |

| ID | WBS | Task | Duration | Start | Finish | Predecessors |
| --- | --- | --- | --- | --- | --- | --- |
| 71 | 11 | **Validación y transición a operaciones** | 65d? | 2027-01-04 | 2027-04-02 |  |
| 72 |  | Evaluación integral de los resultados del proyecto | 10d? | 2027-01-04 | 2027-01-15 |  |
| 73 |  | Verificación del cumplimiento de los objetivos y criterios de aceptación | 10d? | 2027-01-18 | 2027-01-29 | 72 |
| 74 |  | Preparación de la documentación de transición a operaciones | 15d? | 2027-02-01 | 2027-02-19 | 73 |
| 75 |  | Transferencia de conocimientos y responsabilidades al equipo operativo | 15d? | 2027-02-22 | 2027-03-12 | 74 |
| 76 |  | Validación de la preparación operativa de la agencia | 10d? | 2027-03-15 | 2027-03-26 | 75 |
| 77 |  | Aprobación formal de la transición a operaciones | 5d? | 2027-03-29 | 2027-04-02 | 76 |
| 78 | 12 | **Cierre del proyecto** | 40d? | 2027-01-04 | 2027-02-26 |  |
| 79 |  | Verificación final de entregables y compromisos contractuales | 5d? | 2027-01-04 | 2027-01-08 |  |
| 80 |  | Evaluación final del presupuesto, cronograma y desempeño | 5d? | 2027-01-11 | 2027-01-15 | 79 |
| 81 |  | Elaboración del informe final del proyecto | 10d? | 2027-01-18 | 2027-01-29 | 80 |
| 82 |  | Documentación de lecciones aprendidas y recomendaciones | 5d? | 2027-02-01 | 2027-02-05 | 81 |
| 83 |  | Cierre administrativo, financiero y contractual | 10d? | 2027-02-08 | 2027-02-19 | 82 |
| 84 |  | Presentación y aprobación del acta de cierre del proyecto | 5d? | 2027-02-22 | 2027-02-26 | 83 |

## Version 2 (saved 2026-10-13)

Note of the change: main: gannt

Last finish stays 2027-11-12.

Removed: 44 Procesos, calidad y gobierno

Changed:

| ID | Task | Start | Finish | Duration | Predecessors | Other |
| --- | --- | --- | --- | --- | --- | --- |
| 2 | Formalización del inicio del proyecto |  |  |  |  | resources none → Project Manager |
| 3 | Identificación y análisis de stakeholders |  |  |  |  | resources none → Project Manager |
| 4 | Elaboración del plan de dirección del proyecto |  |  |  |  | resources none → Project Manager |
| 5 | Aprobación del plan de dirección |  |  |  |  | resources none → Project Manager |
| 6 | Seguimiento y control integrado |  |  |  |  | resources none → Project Manager |
| 7 | Gestión de cambios y riesgos |  |  |  |  | resources none → Project Manager |
| 8 | **Modelo operativo y planificación de la implantación** | 2027-01-04 → 2027-02-22 (+49d) | 2027-03-19 → 2027-05-07 (+49d) |  |  |  |
| 9 | Análisis del modelo de negocio y requisitos operativos | 2027-01-04 → 2027-02-22 (+49d) | 2027-01-15 → 2027-03-05 (+49d) |  | none → 5 | resources none → Operations Manager |
| 10 | Definición de la estructura organizativa | 2027-01-18 → 2027-03-08 (+49d) | 2027-01-29 → 2027-03-19 (+49d) |  |  | resources none → Operations Manager |
| 11 | Diseño del modelo operativo | 2027-02-01 → 2027-03-22 (+49d) | 2027-02-19 → 2027-04-09 (+49d) |  |  | resources none → Operations Manager |
| 12 | Elaboración del plan de implantación | 2027-02-22 → 2027-04-12 (+49d) | 2027-03-12 → 2027-04-30 (+49d) |  |  | resources none → Project Manager |
| 13 | Validación y aprobación del modelo operativo | 2027-03-15 → 2027-05-03 (+49d) | 2027-03-19 → 2027-05-07 (+49d) |  |  | resources none → Project Sponsor |
| 14 | **Constitución legal, administrativa y financiera** | 2027-01-04 → 2027-01-11 (+7d) | 2027-04-16 → 2027-04-23 (+7d) |  |  |  |
| 15 | Definición de la forma jurídica y estructura societaria | 2027-01-04 → 2027-01-11 (+7d) | 2027-01-15 → 2027-01-22 (+7d) |  | none → 2 | resources none → Legal & Finance Lead |
| 16 | Preparación de la documentación de constitución | 2027-01-18 → 2027-01-25 (+7d) | 2027-01-29 → 2027-02-05 (+7d) |  |  | resources none → Legal & Finance Lead |
| 17 | Formalización notarial e inscripción registral | 2027-02-01 → 2027-02-08 (+7d) | 2027-02-26 → 2027-03-05 (+7d) |  |  | resources none → Legal & Finance Lead |
| 18 | Altas fiscales, laborales y administrativas | 2027-03-01 → 2027-03-08 (+7d) | 2027-03-12 → 2027-03-19 (+7d) |  |  | resources none → Legal & Finance Lead |
| 19 | Apertura de cuentas y configuración financiera | 2027-03-15 → 2027-03-22 (+7d) | 2027-03-26 → 2027-04-02 (+7d) |  |  | resources none → Legal & Finance Lead |
| 20 | Preparación de contratos y procedimientos administrativos | 2027-03-29 → 2027-04-05 (+7d) | 2027-04-16 → 2027-04-23 (+7d) |  |  | resources none → Legal & Finance Lead |
| 21 | **Organización y equipo** | 2027-01-04 → 2027-03-22 (+77d) | 2027-04-30 → 2027-07-16 (+77d) |  |  |  |
| 22 | Definición de perfiles, roles y responsabilidades | 2027-01-04 → 2027-03-22 (+77d) | 2027-01-15 → 2027-04-02 (+77d) |  | none → 10 | resources none → HR Manager |
| 23 | Elaboración del plan de contratación | 2027-01-18 → 2027-04-05 (+77d) | 2027-01-29 → 2027-04-16 (+77d) |  |  | resources none → HR Manager |
| 24 | Selección y contratación del equipo inicial | 2027-02-01 → 2027-04-19 (+77d) | 2027-03-12 → 2027-05-28 (+77d) |  | 23 → 18, 23 | resources none → HR Manager |
| 25 | Incorporación y onboarding del personal | 2027-03-15 → 2027-05-31 (+77d) | 2027-04-02 → 2027-06-18 (+77d) |  |  | resources none → HR Manager |
| 26 | Formación en procesos, herramientas y metodologías | 2027-04-05 → 2027-06-21 (+77d) | 2027-04-23 → 2027-07-09 (+77d) |  |  | resources none → HR Manager |
| 27 | Validación de la preparación operativa del equipo | 2027-04-26 → 2027-07-12 (+77d) | 2027-04-30 → 2027-07-16 (+77d) |  |  | resources none → Operations Manager |
| 28 | **Catálogo de servicios y modelo de delivery** | 2027-01-04 → 2027-05-10 (+126d) | 2027-04-23 → 2027-08-27 (+126d) |  |  |  |
| 29 | Definición de las cinco líneas de servicio | 2027-01-04 → 2027-05-10 (+126d) | 2027-01-22 → 2027-05-28 (+126d) |  | none → 13 | resources none → Delivery Lead |
| 30 | Diseño del catálogo de servicios y entregables | 2027-01-25 → 2027-05-31 (+126d) | 2027-02-12 → 2027-06-18 (+126d) |  |  | resources none → Delivery Lead |
| 31 | Definición del modelo de estimación y presupuestación | 2027-02-15 → 2027-06-21 (+126d) | 2027-02-26 → 2027-07-02 (+126d) |  |  | resources none → Delivery Lead |
| 32 | Diseño del modelo de delivery y gestión de proyectos | 2027-03-01 → 2027-07-05 (+126d) | 2027-03-26 → 2027-07-30 (+126d) |  |  | resources none → Delivery Lead |
| 33 | Elaboración de plantillas y estándares de entrega | 2027-03-29 → 2027-08-02 (+126d) | 2027-04-16 → 2027-08-20 (+126d) |  |  | resources none → Delivery Lead |
| 34 | Validación y aprobación del catálogo y modelo de delivery | 2027-04-19 → 2027-08-23 (+126d) | 2027-04-23 → 2027-08-27 (+126d) |  |  | resources none → Operations Manager |
| 35 | **Plataforma tecnológica** | 2027-01-04 → 2027-04-12 (+98d) | 2027-06-04 → 2027-09-10 (+98d) |  |  |  |
| 36 | Definición de requisitos tecnológicos y arquitectura de referencia | 2027-01-04 → 2027-04-12 (+98d) | 2027-01-22 → 2027-04-30 (+98d) |  | none → 11 | resources none → Technology Lead |
| 37 | Selección de proveedores cloud y herramientas tecnológicas | 2027-01-25 → 2027-05-03 (+98d) | 2027-02-05 → 2027-05-14 (+98d) |  |  | resources none → Technology Lead |
| 38 | Configuración de infraestructura cloud y entornos de trabajo | 2027-02-08 → 2027-05-17 (+98d) | 2027-03-05 → 2027-06-11 (+98d) |  |  | resources none → DevOps Engineer |
| 39 | Implantación de repositorios y pipelines CI/CD | 2027-03-08 → 2027-06-14 (+98d) | 2027-03-26 → 2027-07-02 (+98d) |  |  | resources none → DevOps Engineer |
| 40 | Configuración de herramientas de gestión y documentación | 2027-03-29 → 2027-07-05 (+98d) | 2027-04-09 → 2027-07-16 (+98d) |  |  | resources none → Technology Lead |
| 41 | Implantación de herramientas de testing y control de calidad | 2027-04-12 → 2027-07-19 (+98d) | 2027-04-30 → 2027-08-06 (+98d) |  |  | resources none → QA Engineer |
| 42 | Configuración de monitorización, seguridad y copias de seguridad | 2027-05-03 → 2027-08-09 (+98d) | 2027-05-21 → 2027-08-27 (+98d) |  |  | resources none → DevOps Engineer |
| 43 | Pruebas de integración y validación de la plataforma tecnológica | 2027-05-24 → 2027-08-30 (+98d) | 2027-06-04 → 2027-09-10 (+98d) |  |  | resources none → Technology Lead |
| 44 | **Definición del modelo de gobierno y responsabilidades** |  | 2027-05-07 → 2027-07-30 (+84d) | 90d? → 150d? |  |  |
| 45 | Diseño de procesos de gestión de proyectos |  |  |  |  | resources none → Project Manager |
| 46 | Definición de estándares de calidad y criterios de aceptación | 2027-01-18 → 2027-04-12 (+84d) | 2027-02-05 → 2027-04-30 (+84d) |  | 45 → 11 | resources none → Project Manager |
| 47 | Diseño de procesos de gestión de riesgos y cambios | 2027-02-08 → 2027-05-03 (+84d) | 2027-02-26 → 2027-05-21 (+84d) |  |  | resources none → Quality Lead |
| 48 | Definición de políticas de seguridad y protección de datos | 2027-03-01 → 2027-05-24 (+84d) | 2027-03-12 → 2027-06-04 (+84d) |  |  | resources none → Project Manager |
| 49 | Implantación de procesos de documentación y gestión del conocimiento | 2027-03-15 → 2027-06-07 (+84d) | 2027-04-02 → 2027-06-25 (+84d) |  |  | resources none → Technology Lead |
| 50 | Configuración de indicadores KPI y mecanismos de seguimiento | 2027-04-05 → 2027-06-28 (+84d) | 2027-04-23 → 2027-07-16 (+84d) |  |  | resources none → Quality Lead |
| 51 | Validación y aprobación del sistema de procesos y gobierno | 2027-04-26 → 2027-07-19 (+84d) | 2027-05-07 → 2027-07-30 (+84d) |  |  | resources none → Quality Lead |
| 53 | Definición de la estrategia comercial y posicionamiento de mercado |  |  |  |  | resources none → Commercial & Marketing Lead |
| 54 | Desarrollo de la identidad corporativa y materiales de marca |  |  |  |  | resources none → Marketing Specialist |
| 55 | Diseño y desarrollo del sitio web corporativo |  |  |  |  | resources none → Web Developer |
| 56 | Selección y configuración del sistema CRM |  |  |  |  | resources none → Commercial & Marketing Lead |
| 57 | Elaboración de propuestas comerciales y materiales de ventas |  |  |  |  | resources none → Commercial & Marketing Lead |
| 58 | Definición de procesos comerciales y gestión de clientes |  |  |  |  | resources none → Commercial & Marketing Lead |
| 59 | Preparación de canales digitales y herramientas de marketing |  |  |  |  | resources none → Commercial & Marketing Lead |
| 60 | Validación y aprobación de las capacidades comerciales |  |  |  |  | resources none → Marketing Specialist |
| 61 | **Proyectos piloto** |  | 2027-11-12 → 2027-06-18 (-147d) | 225d? → 120d? |  |  |
| 62 | Confirmación del alcance y requisitos de los tres proyectos piloto |  |  |  |  | resources none → Delivery Lead |
| 63 | Planificación detallada de los proyectos piloto |  |  |  |  | resources none → Delivery Lead |
| 64 | Preparación de equipos y entornos de ejecución |  |  |  |  | resources none → Technology Lead |
| 65 | Ejecución del proyecto piloto 1 |  | 2027-04-23 → 2027-05-14 (+21d) | 45d? → 60d? |  | resources none → Pilot Project Manager 1 |
| 66 | Ejecución del proyecto piloto 2 | 2027-04-26 → 2027-02-22 (-63d) | 2027-07-16 → 2027-05-14 (-63d) |  | 65 → 64 | resources none → Pilot Project Manager 2 |
| 67 | Ejecución del proyecto piloto 3 | 2027-07-19 → 2027-02-22 (-147d) | 2027-10-08 → 2027-05-14 (-147d) |  | 66 → 64 | resources none → Pilot Project Manager 3 |
| 68 | Evaluación de resultados y recopilación de indicadores KPI | 2027-10-11 → 2027-05-17 (-147d) | 2027-10-29 → 2027-06-04 (-147d) |  | 67 → 65, 66, 67 | resources none → Quality Lead |
| 69 | Validación y aceptación formal de los tres proyectos piloto | 2027-11-01 → 2027-06-07 (-147d) | 2027-11-12 → 2027-06-18 (-147d) |  |  | resources none → Delivery Lead |
| 70 | **Validación y transición a operaciones** | 2027-01-04 → 2027-06-21 (+168d) | 2027-04-02 → 2027-09-17 (+168d) |  |  |  |
| 71 | Evaluación integral de los resultados del proyecto | 2027-01-04 → 2027-06-21 (+168d) | 2027-01-15 → 2027-07-02 (+168d) |  | none → 69 | resources none → Project Manager |
| 72 | Verificación del cumplimiento de los objetivos y criterios de aceptación | 2027-01-18 → 2027-07-05 (+168d) | 2027-01-29 → 2027-07-16 (+168d) |  |  | resources none → Quality Lead |

| ID | Task | Start | Finish | Predecessors | Other |
| --- | --- | --- | --- | --- | --- |
| 73 | Preparación de la documentación de transición a operaciones | 2027-02-01 → 2027-07-19 (+168d) | 2027-02-19 → 2027-08-06 (+168d) |  | resources none → Operations Manager |
| 74 | Transferencia de conocimientos y responsabilidades al equipo operativo | 2027-02-22 → 2027-08-09 (+168d) | 2027-03-12 → 2027-08-27 (+168d) |  | resources none → Operations Manager |
| 75 | Validación de la preparación operativa de la agencia | 2027-03-15 → 2027-08-30 (+168d) | 2027-03-26 → 2027-09-10 (+168d) |  | resources none → Operations Manager |
| 76 | Aprobación formal de la transición a operaciones | 2027-03-29 → 2027-09-13 (+168d) | 2027-04-02 → 2027-09-17 (+168d) |  | resources none → Project Sponsor |
| 77 | **Cierre del proyecto** | 2027-01-04 → 2027-09-20 (+259d) | 2027-02-26 → 2027-11-12 (+259d) |  |  |
| 78 | Verificación final de entregables y compromisos contractuales | 2027-01-04 → 2027-09-20 (+259d) | 2027-01-08 → 2027-09-24 (+259d) | none → 76 | resources none → Project Manager |
| 79 | Evaluación final del presupuesto, cronograma y desempeño | 2027-01-11 → 2027-09-27 (+259d) | 2027-01-15 → 2027-10-01 (+259d) |  | resources none → Project Manager |
| 80 | Elaboración del informe final del proyecto | 2027-01-18 → 2027-10-04 (+259d) | 2027-01-29 → 2027-10-15 (+259d) |  | resources none → Project Manager |
| 81 | Documentación de lecciones aprendidas y recomendaciones | 2027-02-01 → 2027-10-18 (+259d) | 2027-02-05 → 2027-10-22 (+259d) |  | resources none → Project Manager |
| 82 | Cierre administrativo, financiero y contractual | 2027-02-08 → 2027-10-25 (+259d) | 2027-02-19 → 2027-11-05 (+259d) |  | resources none → Legal & Finance Lead |
| 83 | Presentación y aprobación del acta de cierre del proyecto | 2027-02-22 → 2027-11-08 (+259d) | 2027-02-26 → 2027-11-12 (+259d) |  | resources none → Project Sponsor |

## Version 3 (saved 2026-10-13)

Note of the change: main: gannt, ruta critica

Last finish 2027-11-12 → 2028-06-16 (+217d).

Added:

| ID | Task | Duration | Start | Finish | Predecessors | Resources |
| --- | --- | --- | --- | --- | --- | --- |
| 45 | Definición del modelo de gobierno y responsabilidades | 10d? | 2027-04-12 | 2027-04-23 | 11 | Project Manager |

Changed:

| ID | Task | Start | Finish | Duration | Predecessors | Other |
| --- | --- | --- | --- | --- | --- | --- |
| 1 | **Dirección y gestión del proyecto** |  | 2027-02-19 → 2028-06-09 (+476d) | 35d? → 375d? |  |  |
| 6 | Seguimiento y control integrado | 2027-01-04 → 2027-02-22 (+49d) | 2027-01-04 → 2028-06-09 (+522d) | 1d? → 340d | none → 5 | resources Project Manager → Project Manager [20%] |
| 7 | Gestión de cambios y riesgos | 2027-01-04 → 2027-02-22 (+49d) | 2027-01-04 → 2028-06-09 (+522d) | 1d? → 340d | none → 5 | resources Project Manager → Project Manager [10%] |
| 44 | **Procesos, calidad y gobernio** | 2027-01-04 → 2027-04-12 (+98d) | 2027-07-30 → 2027-08-27 (+28d) | 150d? → 100d? |  | was named Definición del modelo de gobierno y responsabilidades |
| 46 | Diseño de procesos de gestión de proyectos | 2027-01-04 → 2027-04-26 (+112d) | 2027-01-15 → 2027-05-07 (+112d) | 10d? → 10d | none → 45 |  |
| 47 | Definición de estándares de calidad y criterios de aceptación | 2027-04-12 → 2027-05-10 (+28d) | 2027-04-30 → 2027-05-28 (+28d) | 15d? → 15d | 11 → 46 |  |
| 48 | Diseño de procesos de gestión de riesgos y cambios | 2027-05-03 → 2027-05-31 (+28d) | 2027-05-21 → 2027-06-18 (+28d) | 15d? → 15d |  |  |
| 49 | Definición de políticas de seguridad y protección de datos | 2027-05-24 → 2027-06-21 (+28d) | 2027-06-04 → 2027-07-02 (+28d) |  |  |  |
| 50 | Implantación de procesos de documentación y gestión del conocimiento | 2027-06-07 → 2027-07-05 (+28d) | 2027-06-25 → 2027-07-23 (+28d) |  |  |  |
| 51 | Configuración de indicadores KPI y mecanismos de seguimiento | 2027-06-28 → 2027-07-26 (+28d) | 2027-07-16 → 2027-08-13 (+28d) |  |  |  |
| 52 | Validación y aprobación del sistema de procesos y gobierno | 2027-07-19 → 2027-08-16 (+28d) | 2027-07-30 → 2027-08-27 (+28d) |  |  |  |
| 53 | **Capacidades comerciales y de marketing** | 2027-01-04 → 2027-04-12 (+98d) | 2027-06-04 → 2027-09-10 (+98d) |  |  |  |
| 54 | Definición de la estrategia comercial y posicionamiento de mercado | 2027-01-04 → 2027-04-12 (+98d) | 2027-01-22 → 2027-04-30 (+98d) |  | none → 11 |  |
| 55 | Desarrollo de la identidad corporativa y materiales de marca | 2027-01-25 → 2027-05-03 (+98d) | 2027-02-12 → 2027-05-21 (+98d) |  |  |  |
| 56 | Diseño y desarrollo del sitio web corporativo | 2027-02-15 → 2027-05-24 (+98d) | 2027-03-12 → 2027-06-18 (+98d) |  |  |  |
| 57 | Selección y configuración del sistema CRM | 2027-03-15 → 2027-06-21 (+98d) | 2027-04-02 → 2027-07-09 (+98d) |  |  |  |
| 58 | Elaboración de propuestas comerciales y materiales de ventas | 2027-04-05 → 2027-07-12 (+98d) | 2027-04-23 → 2027-07-30 (+98d) |  |  |  |
| 59 | Definición de procesos comerciales y gestión de clientes | 2027-04-26 → 2027-08-02 (+98d) | 2027-05-14 → 2027-08-20 (+98d) |  |  |  |
| 60 | Preparación de canales digitales y herramientas de marketing | 2027-05-17 → 2027-08-23 (+98d) | 2027-05-28 → 2027-09-03 (+98d) |  |  |  |
| 61 | Validación y aprobación de las capacidades comerciales | 2027-05-31 → 2027-09-06 (+98d) | 2027-06-04 → 2027-09-10 (+98d) |  |  |  |
| 62 | **Proyectos piloto** | 2027-01-04 → 2027-02-22 (+49d) | 2027-06-18 → 2028-01-21 (+217d) | 120d? → 240d? |  |  |
| 63 | Confirmación del alcance y requisitos de los tres proyectos piloto | 2027-01-04 → 2027-02-22 (+49d) | 2027-01-15 → 2027-03-05 (+49d) |  | none → 5 |  |
| 64 | Planificación detallada de los proyectos piloto | 2027-01-18 → 2027-03-08 (+49d) | 2027-02-05 → 2027-03-26 (+49d) |  |  |  |
| 65 | Preparación de equipos y entornos de ejecución | 2027-02-08 → 2027-09-13 (+217d) | 2027-02-19 → 2027-09-24 (+217d) |  | 64 → 27, 34, 43, 52, 60, 64 |  |
| 66 | Ejecución del proyecto piloto 1 | 2027-02-22 → 2027-09-27 (+217d) | 2027-05-14 → 2027-12-17 (+217d) |  |  |  |
| 67 | Ejecución del proyecto piloto 2 | 2027-02-22 → 2027-09-27 (+217d) | 2027-05-14 → 2027-12-17 (+217d) |  |  |  |
| 68 | Ejecución del proyecto piloto 3 | 2027-02-22 → 2027-09-27 (+217d) | 2027-05-14 → 2027-12-17 (+217d) |  |  |  |
| 69 | Evaluación de resultados y recopilación de indicadores KPI | 2027-05-17 → 2027-12-20 (+217d) | 2027-06-04 → 2028-01-07 (+217d) |  |  |  |
| 70 | Validación y aceptación formal de los tres proyectos piloto | 2027-06-07 → 2028-01-10 (+217d) | 2027-06-18 → 2028-01-21 (+217d) |  |  |  |
| 71 | **Validación y transición a operaciones** | 2027-06-21 → 2028-01-24 (+217d) | 2027-09-17 → 2028-04-21 (+217d) |  |  |  |
| 72 | Evaluación integral de los resultados del proyecto | 2027-06-21 → 2028-01-24 (+217d) | 2027-07-02 → 2028-02-04 (+217d) |  |  |  |
| 73 | Verificación del cumplimiento de los objetivos y criterios de aceptación | 2027-07-05 → 2028-02-07 (+217d) | 2027-07-16 → 2028-02-18 (+217d) |  |  |  |
| 74 | Preparación de la documentación de transición a operaciones | 2027-07-19 → 2028-02-21 (+217d) | 2027-08-06 → 2028-03-10 (+217d) |  |  |  |
| 75 | Transferencia de conocimientos y responsabilidades al equipo operativo | 2027-08-09 → 2028-03-13 (+217d) | 2027-08-27 → 2028-03-31 (+217d) |  |  |  |
| 76 | Validación de la preparación operativa de la agencia | 2027-08-30 → 2028-04-03 (+217d) | 2027-09-10 → 2028-04-14 (+217d) |  |  |  |
| 77 | Aprobación formal de la transición a operaciones | 2027-09-13 → 2028-04-17 (+217d) | 2027-09-17 → 2028-04-21 (+217d) |  |  |  |
| 78 | **Cierre del proyecto** | 2027-09-20 → 2028-04-24 (+217d) | 2027-11-12 → 2028-06-16 (+217d) |  |  |  |
| 79 | Verificación final de entregables y compromisos contractuales | 2027-09-20 → 2028-04-24 (+217d) | 2027-09-24 → 2028-04-28 (+217d) |  |  |  |
| 80 | Evaluación final del presupuesto, cronograma y desempeño | 2027-09-27 → 2028-05-01 (+217d) | 2027-10-01 → 2028-05-05 (+217d) |  |  |  |
| 81 | Elaboración del informe final del proyecto | 2027-10-04 → 2028-05-08 (+217d) | 2027-10-15 → 2028-05-19 (+217d) |  |  |  |
| 82 | Documentación de lecciones aprendidas y recomendaciones | 2027-10-18 → 2028-05-22 (+217d) | 2027-10-22 → 2028-05-26 (+217d) |  |  |  |
| 83 | Cierre administrativo, financiero y contractual | 2027-10-25 → 2028-05-29 (+217d) | 2027-11-05 → 2028-06-09 (+217d) |  |  |  |
| 84 | Presentación y aprobación del acta de cierre del proyecto | 2027-11-08 → 2028-06-12 (+217d) | 2027-11-12 → 2028-06-16 (+217d) |  |  |  |

## Version 4 (saved 2026-10-14)

Note of the change: main: resources

Last finish stays 2028-06-16.

Changed:

| ID | Task | Start | Finish | Duration | Other |
| --- | --- | --- | --- | --- | --- |
| 8 | **Modelo operativo y planificación de la implantación** |  | 2027-05-07 → 2027-04-28 (-9d) | 55d? → 47.5d? |  |
| 12 | Elaboración del plan de implantación |  | 2027-04-30 → 2027-04-21 (-9d) | 15d? → 7.5d? | resources Project Manager → Project Manager; Operations Manager |
| 13 | Validación y aprobación del modelo operativo | 2027-05-03 → 2027-04-21 (-12d) | 2027-05-07 → 2027-04-28 (-9d) |  |  |
| 28 | **Catálogo de servicios y modelo de delivery** | 2027-05-10 → 2027-04-28 (-12d) | 2027-08-27 → 2027-08-18 (-9d) |  |  |
| 29 | Definición de las cinco líneas de servicio | 2027-05-10 → 2027-04-28 (-12d) | 2027-05-28 → 2027-05-19 (-9d) |  |  |
| 30 | Diseño del catálogo de servicios y entregables | 2027-05-31 → 2027-05-19 (-12d) | 2027-06-18 → 2027-06-09 (-9d) |  |  |
| 31 | Definición del modelo de estimación y presupuestación | 2027-06-21 → 2027-06-09 (-12d) | 2027-07-02 → 2027-06-23 (-9d) |  |  |
| 32 | Diseño del modelo de delivery y gestión de proyectos | 2027-07-05 → 2027-06-23 (-12d) | 2027-07-30 → 2027-07-21 (-9d) |  |  |
| 33 | Elaboración de plantillas y estándares de entrega | 2027-08-02 → 2027-07-21 (-12d) | 2027-08-20 → 2027-08-11 (-9d) |  |  |
| 34 | Validación y aprobación del catálogo y modelo de delivery | 2027-08-23 → 2027-08-11 (-12d) | 2027-08-27 → 2027-08-18 (-9d) |  |  |
| 44 | **Procesos, calidad y gobernio** |  | 2027-08-27 → 2027-08-20 (-7d) | 100d? → 95d? |  |
| 45 | Definición del modelo de gobierno y responsabilidades |  |  | 10d? → 10d | resources Project Manager → Project Manager; Operations Manager |
| 47 | Definición de estándares de calidad y criterios de aceptación |  | 2027-05-28 → 2027-05-21 (-7d) | 15d → 10d | resources Project Manager → Project Manager; Quality Lead |
| 48 | Diseño de procesos de gestión de riesgos y cambios | 2027-05-31 → 2027-05-24 (-7d) | 2027-06-18 → 2027-06-11 (-7d) |  |  |
| 49 | Definición de políticas de seguridad y protección de datos | 2027-06-21 → 2027-06-14 (-7d) | 2027-07-02 → 2027-06-25 (-7d) |  |  |
| 50 | Implantación de procesos de documentación y gestión del conocimiento | 2027-07-05 → 2027-06-28 (-7d) | 2027-07-23 → 2027-07-16 (-7d) |  |  |
| 51 | Configuración de indicadores KPI y mecanismos de seguimiento | 2027-07-26 → 2027-07-19 (-7d) | 2027-08-13 → 2027-08-06 (-7d) |  |  |
| 52 | Validación y aprobación del sistema de procesos y gobierno | 2027-08-16 → 2027-08-09 (-7d) | 2027-08-27 → 2027-08-20 (-7d) |  |  |

## Version 5 (saved 2026-10-14)

Note of the change: main: final version of gannt

Last finish stays 2028-06-16.

Changed:

| ID | Task | Other |
| --- | --- | --- |
| 45 | Definición del modelo de gobierno y responsabilidades | resources Project Manager; Operations Manager → Operations Manager |

## Version 6 (saved 2026-11-01)

Note of the change: main: new task in Tasks

Last finish stays 2028-06-16.

Added:

| ID | Task | Duration | Start | Finish | Predecessors | Constraint |
| --- | --- | --- | --- | --- | --- | --- |
| 78 | Transición formal a operaciones aprobada | 0d | 2028-04-21 | 2028-04-21 | 77 | start no earlier than 2028-04-21 |

Changed:

| ID | Task | Predecessors |
| --- | --- | --- |
| 80 | Verificación final de entregables y compromisos contractuales | 77 → 78 |

## Version 7 (saved 2026-11-24)

Note of the change: main: project libre

Last finish stays 2028-06-16.

Added:

| ID | Task | Duration | Start | Finish | Predecessors | Constraint |
| --- | --- | --- | --- | --- | --- | --- |
| 2 | **1.1.1 Planificación y líneas base** | 35d? | 2027-01-04 | 2027-02-19 |  |  |
| 4 | HITO: Inicio formal del proyecto | 0d | 2027-01-04 | 2027-01-04 |  |  |
| 10 | **1.1.3 Cambios, riesgos y comunicaciones** | 340d | 2027-02-22 | 2028-06-09 |  |  |
| 12 | **1.2 Modelo operativo y planificación de la implantación** | 48d? | 2027-02-22 | 2027-04-28 |  |  |
| 13 | **1.2.1 Diseño del modelo operativo** | 35d? | 2027-02-22 | 2027-04-09 |  |  |
| 16 | **1.2.2 Plan de implantación y aprobación** | 13d? | 2027-04-12 | 2027-04-28 |  |  |
| 19 | HITO: Modelo operativo y plan de implantación aprobados | 0d | 2027-04-28 | 2027-04-28 | 18FF |  |
| 20 | **1.3 Constitución legal, administrativa y financiera** | 75d? | 2027-01-11 | 2027-04-23 |  |  |
| 25 | **1.3.2 Procesos fiscales, financieros y contractuales** | 35d? | 2027-03-08 | 2027-04-23 |  |  |
| 29 | HITO: Constitución legal y administrativa completada | 0d | 2027-04-23 | 2027-04-23 | 28FF |  |
| 30 | **1.4 Organización y equipo** | 95d? | 2027-03-08 | 2027-07-16 |  |  |
| 31 | **1.4.1 Diseño organizativo** | 30d? | 2027-03-08 | 2027-04-16 |  |  |
| 34 | HITO: Diseño organizativo y responsabilidades completados | 0d | 2027-04-02 | 2027-04-02 | 33FF |  |
| 36 | **1.4.2 Selección y contratación** | 30d? | 2027-04-19 | 2027-05-28 |  |  |
| 38 | **1.4.3 Incorporación y formación** | 35d? | 2027-05-31 | 2027-07-16 |  |  |
| 42 | HITO: Equipo inicial incorporado y preparado | 0d | 2027-07-16 | 2027-07-16 | 41FF |  |
| 43 | **1.5 Catálogo de servicios y modelo de delivery** | 142.5d? | 2027-01-04 | 2027-07-21 |  | start no later than 2027-04-28 |
| 47 | **1.5.2 Modelo de delivery** | 127.5d? | 2027-01-25 | 2027-07-21 |  |  |
| 51 | **1.5.3 Estándares y arquitectura de soluciones** | 15d? | 2027-01-04 | 2027-01-22 |  |  |
| 54 | **1.6.1 Arquitectura e infraestructura cloud** | 45d? | 2027-04-12 | 2027-06-11 |  |  |
| 58 | **1.6.2 Herramientas y CI/CD** | 25d? | 2027-06-14 | 2027-07-16 |  |  |
| 61 | **1.6.3 Seguridad, monitorización y pruebas** | 40d? | 2027-07-19 | 2027-09-10 |  |  |
| 65 | HITO: Plataforma tecnológica básica operativa | 0d | 2027-09-10 | 2027-09-10 | 64FF |  |
| 66 | **1.7 Procesos, calidad y gobierno** | 90d? | 2027-01-04 | 2027-05-07 |  |  |
| 67 | **1.7.1 Procesos de gestión y desarrollo** | 80d | 2027-01-18 | 2027-05-07 |  |  |
| 70 | **1.7.2 QA/QC y seguridad** | 35d? | 2027-01-04 | 2027-02-19 |  |  |
| 73 | **1.7.3 Gobierno y gestión del conocimiento** | 45d? | 2027-02-22 | 2027-04-23 |  |  |
| 78 | HITO: Procesos de gestión, calidad y gobierno aprobados | 0d | 2027-04-16 | 2027-04-16 | 77FF |  |
| 80 | **1.8.1 Identidad y presencia digital** | 100d? | 2027-01-04 | 2027-05-21 |  |  |
| 83 | **1.8.2 CRM y proceso comercial** | 20d? | 2027-01-25 | 2027-02-19 |  |  |
| 86 | **1.8.3 Captación y formalización de oportunidades** | 85d? | 2027-01-04 | 2027-04-30 |  |  |
| 91 | **1.9 Proyectos piloto** | 240d? | 2027-02-22 | 2028-01-21 |  |  |
| 92 | **1.9.1 Definición preliminar del alcance de pilotos** | 10d? | 2027-02-22 | 2027-03-05 |  |  |
| 94 | **1.9.2 Planificación preliminar de pilotos** | 15d? | 2027-03-08 | 2027-03-26 |  |  |
| 96 | **1.9.3 Contratos y requisitos de tres clientes** | 10d? | 2027-09-13 | 2027-09-24 |  |  |
| 97 | Formalización de contratos y requisitos de los tres clientes piloto | 10d? | 2027-09-13 | 2027-09-24 | 90, 95 | must start on 2027-09-13 |
| 98 | **1.9.4 Preparación de equipos y entornos** | 10d? | 2027-09-13 | 2027-09-24 |  |  |
| 100 | HITO: Contratos y entornos de los tres pilotos preparados | 0d | 2027-09-24 | 2027-09-24 | 97FF, 99FF |  |
| 101 | **1.9.5 Ejecución del proyecto piloto 1** | 60d? | 2027-09-27 | 2027-12-17 |  |  |
| 103 | HITO: Inicio de ejecución de los tres pilotos | 0d | 2027-09-27 | 2027-09-27 | 102SS, 105SS, 107SS |  |
| 104 | **1.9.6 Ejecución del proyecto piloto 2** | 60d? | 2027-09-27 | 2027-12-17 |  |  |
| 106 | **1.9.7 Ejecución del proyecto piloto 3** | 60d? | 2027-09-27 | 2027-12-17 |  |  |
| 108 | **1.9.8 Evaluación de resultados de pilotos** | 15d? | 2027-12-20 | 2028-01-07 |  |  |
| 110 | **1.9.9 Aceptación formal de tres pilotos** | 10d? | 2028-01-10 | 2028-01-21 |  |  |
| 112 | HITO: Tres proyectos piloto aceptados formalmente | 0d | 2028-01-21 | 2028-01-21 | 111FF |  |
| 113 | **1.10 Validación y transición a operaciones** | 65d? | 2028-01-24 | 2028-04-21 |  |  |
| 114 | **1.10.1 Evaluación de mejoras operativas** | 20d? | 2028-01-24 | 2028-02-18 |  |  |
| 117 | **1.10.2 Validación de preparación operativa** | 10d? | 2028-04-03 | 2028-04-14 |  |  |
| 119 | HITO: Preparación operativa de la agencia validada | 0d | 2028-04-14 | 2028-04-14 | 118FF |  |
| 120 | **1.10.3 Transferencia y aceptación operativa** | 45d? | 2028-02-21 | 2028-04-21 |  |  |
| 124 | HITO: Transición formal a operaciones aprobada | 0d | 2028-04-21 | 2028-04-21 | 123FF | must start on 2028-04-21 |
| 126 | **1.11 Cierre del proyecto** | 40d? | 2028-04-24 | 2028-06-16 |  |  |
| 127 | **1.11.1 Cierre administrativo y contractual** | 35d? | 2028-04-24 | 2028-06-09 |  |  |
| 131 | **1.11.2 Informe final y lecciones aprendidas** | 15d? | 2028-05-08 | 2028-05-26 |  |  |
| 134 | **1.11.3 Aceptación y cierre formal** | 5d? | 2028-06-12 | 2028-06-16 |  |  |
| 136 | HITO: Cierre formal del proyecto completado | 0d | 2028-06-16 | 2028-06-16 | 135FF |  |

Removed: 14 Constitución legal, administrativa y financiera; 28 Catálogo de servicios y modelo de delivery; 35 Plataforma tecnológica; 62 Proyectos piloto; 71 Validación y transición a operaciones

Changed:

| ID | Task | Start | Finish | Duration | Predecessors | Other |
| --- | --- | --- | --- | --- | --- | --- |
| 1 | **1.1 Dirección y gestión del proyecto** |  |  |  |  | was named Dirección y gestión del proyecto |
| 8 | **1.1.2 Seguimiento y control integrado** |  | 2027-04-28 → 2028-06-09 (+408d) | 47.5d? → 340d |  | was named Modelo operativo y planificación de la implantación |
| 14 | Análisis del modelo de negocio y requisitos operativos |  |  |  |  | constraint none → start no earlier than 2027-02-22 |
| 15 | Diseño del modelo operativo |  |  |  |  | constraint none → start no earlier than 2027-03-22 |
| 17 | Elaboración del plan de implantación |  |  | 7.5d? → 8d? |  | constraint none → start no earlier than 2027-04-12 |
| 18 | Validación y aprobación del modelo operativo |  |  | 5d? → 5.5d? |  | constraint none → start no later than 2027-04-21 |
| 21 | **1.3.1 Constitución y trámites legales** | 2027-03-22 → 2027-01-11 (-70d) | 2027-07-16 → 2027-03-05 (-133d) | 85d? → 40d? |  | was named Organización y equipo |
| 32 | Definición de la estructura organizativa |  |  |  | 14 → none | constraint none → start no earlier than 2027-03-08 |
| 33 | Definición de perfiles, roles y responsabilidades |  |  |  |  | constraint none → start no earlier than 2027-03-22 |
| 35 | Elaboración del plan de contratación |  |  |  |  | constraint none → start no earlier than 2027-04-05 |
| 37 | Selección y contratación del equipo inicial |  |  |  |  | constraint none → start no earlier than 2027-04-19 |
| 39 | Incorporación y onboarding del personal |  |  |  |  | constraint none → start no earlier than 2027-05-31 |
| 40 | Formación en procesos, herramientas y metodologías |  |  |  |  | constraint none → start no earlier than 2027-06-21 |
| 41 | Validación de la preparación operativa del equipo |  |  |  |  | constraint none → start no earlier than 2027-07-12 |
| 44 | **1.5.1 Catálogo de cinco servicios** | 2027-04-12 → 2027-04-28 (+16d) | 2027-08-20 → 2027-06-09 (-72d) | 95d? → 30d? |  | was named Procesos, calidad y gobernio |
| 45 | Definición de las cinco líneas de servicio |  |  |  |  | constraint none → start no later than 2027-04-28 |
| 46 | Diseño del catálogo de servicios y entregables |  |  |  |  | constraint none → start no later than 2027-05-19 |
| 48 | Definición del modelo de estimación y presupuestación |  |  |  |  | constraint none → start no later than 2027-06-09 |
| 49 | Diseño del modelo de delivery y gestión de proyectos |  |  |  |  | constraint none → start no later than 2027-06-23 |
| 50 | Validación y aprobación del catálogo y modelo de delivery | 2027-08-11 → 2027-01-25 (-198d) | 2027-08-18 → 2027-01-29 (-201d) |  |  | constraint none → start no later than 2027-08-11 |
| 52 | Elaboración de plantillas y estándares de entrega | 2027-07-21 → 2027-01-04 (-198d) | 2027-08-11 → 2027-01-22 (-201d) |  | 49 → none | constraint none → start no later than 2027-07-21 |
| 53 | **1.6 Plataforma tecnológica** |  |  |  |  | was named Capacidades comerciales y de marketing |
| 69 | Diseño de procesos de gestión de riesgos y cambios | 2027-05-24 → 2027-01-18 (-126d) | 2027-06-11 → 2027-02-05 (-126d) |  |  |  |
| 71 | Definición de estándares de calidad y criterios de aceptación | 2027-05-10 → 2027-01-04 (-126d) | 2027-05-21 → 2027-01-15 (-126d) |  | 68 → none |  |
| 72 | Definición de políticas de seguridad y protección de datos | 2027-06-14 → 2027-02-08 (-126d) | 2027-06-25 → 2027-02-19 (-126d) |  |  |  |
| 75 | Implantación de procesos de documentación y gestión del conocimiento | 2027-06-28 → 2027-02-22 (-126d) | 2027-07-16 → 2027-03-12 (-126d) |  |  |  |
| 76 | Configuración de indicadores KPI y mecanismos de seguimiento | 2027-07-19 → 2027-03-15 (-126d) | 2027-08-06 → 2027-04-02 (-126d) |  |  |  |
| 77 | Validación y aprobación del sistema de procesos y gobierno | 2027-08-09 → 2027-04-05 (-126d) | 2027-08-20 → 2027-04-16 (-126d) |  |  |  |
| 79 | **1.8 Capacidades comerciales y de marketing** | 2028-04-24 → 2027-01-04 (-476d) | 2028-06-16 → 2027-05-21 (-392d) | 40d? → 100d? |  | was named Cierre del proyecto |
| 82 | Diseño y desarrollo del sitio web corporativo | 2027-05-24 → 2027-01-04 (-140d) | 2027-06-18 → 2027-01-29 (-140d) |  |  |  |
| 84 | Selección y configuración del sistema CRM | 2027-06-21 → 2027-02-01 (-140d) | 2027-07-09 → 2027-02-19 (-140d) |  |  |  |
| 85 | Definición de procesos comerciales y gestión de clientes | 2027-08-02 → 2027-01-25 (-189d) | 2027-08-20 → 2027-02-12 (-189d) |  |  |  |
| 88 | Elaboración de propuestas comerciales y materiales de ventas | 2027-07-12 → 2027-01-04 (-189d) | 2027-07-30 → 2027-01-22 (-189d) |  | 84 → none |  |
| 89 | Preparación de canales digitales y herramientas de marketing | 2027-08-23 → 2027-02-15 (-189d) | 2027-09-03 → 2027-02-26 (-189d) |  |  |  |
| 90 | Validación y aprobación de las capacidades comerciales | 2027-09-06 → 2027-03-01 (-189d) | 2027-09-10 → 2027-03-05 (-189d) |  |  |  |
| 102 | Ejecución del proyecto piloto 1 |  |  |  | 99 → 99, 97 |  |
| 105 | Ejecución del proyecto piloto 2 |  |  |  | 99 → 99, 97 |  |
| 107 | Ejecución del proyecto piloto 3 |  |  |  | 99 → 99, 97 |  |
| 123 | Aprobación formal de la transición a operaciones |  |  |  | 118 → 118, 122 | constraint none → must start on 2028-04-17 |
| 125 | Transición formal a operaciones aprobada |  |  |  | 123 → 123FF | constraint start no earlier than 2028-04-21 → must start on 2028-04-21 |
| 128 | Verificación final de entregables y compromisos contractuales |  |  |  | 125 → 123 | constraint none → start no earlier than 2028-04-24 |
| 129 | Evaluación final del presupuesto, cronograma y desempeño |  |  |  |  | constraint none → start no earlier than 2028-05-01 |
| 130 | Cierre administrativo, financiero y contractual |  |  |  | 133 → 129, 133 | constraint none → start no earlier than 2028-05-29 |
| 132 | Elaboración del informe final del proyecto |  |  |  |  | constraint none → start no earlier than 2028-05-08 |
| 133 | Documentación de lecciones aprendidas y recomendaciones |  |  |  | 132 → none | constraint none → start no earlier than 2028-05-22 |
| 135 | Presentación y aprobación del acta de cierre del proyecto |  |  |  | 130 → 133, 130 | constraint none → start no earlier than 2028-06-12 |
